# РК

Schedule from MS Project XML, 2024-04-01 to 2024-07-24, status date 2024-05-13, costs in ₽, A marks actual dates.
8 чел. не более 4 мес. не более 620 тыс. руб.

## Calendars

- Стандартный: Mon-Fri 09:00-13:00, 14:00-18:00; Sat-Sun off. Exceptions (off unless hours are given): 2024-05-01 to 2024-05-03 (1 мая), 2024-05-09 (9 мая), 2024-06-12 (12 июня).

## Resources

| Resource | Group | Unit | Rate | Cost per use |
| --- | --- | --- | --- | --- |
| Аналитик |  |  | 500 | 5000 |
| Ведущий программист | Програмисты |  | 437.5 | 3000 |
| программист 1 | Програмисты |  | 312.5 | 2000 |
| программист 2 | Програмисты |  | 312.5 | 2000 |
| программист 3 | Програмисты |  | 312.5 | 2000 |
| Техн. Писатель |  |  | 250 | 1500 |
| Наборщики данных | Техн. Персонал |  | 218.75 | 1000 |
| Сервер БД | Оборудование |  | 25000 | 10000 |
| Картриджи для принтера | Расходные материалы | шт. | 2500 |  |
| Бумага | Расходные материалы | пач. | 200 |  |
| Договор об обслуживании |  |  | 3000 |  |

## Schedule

| ID | WBS | Task | Type | Duration | Start | Finish | Predecessors | Complete | Remaining | Baseline start | Baseline finish | Baseline duration | Total slack | Free slack | Constraint | Resources | Work | Actual work | Cost | Baseline cost | Actual cost |
| --- | --- | --- | --- | --- | --- | --- | --- | --- | --- | --- | --- | --- | --- | --- | --- | --- | --- | --- | --- | --- | --- |
| 1 | 1 | Начало реализации проекта | milestone | 0d | 2024-04-01 09:00 A | 2024-04-01 09:00 A |  | 100% |  | 2024-04-01 09:00 | 2024-04-01 09:00 |  |  |  |  |  |  |  |  |  |  |
| 2 | 2 | **Программирование** |  | 35.99d | 2024-04-02 09:00 A | 2024-05-27 17:53 |  | 76% | 8.52d | 2024-04-02 09:00 | 2024-05-27 17:53 | 35.99d | 0d |  |  | Сервер БД | 816h | 677.88h | 362,207.81 | 342,437.5 | 321,995.21 |
| 3 | 2.1 | Постановка задачи |  | 5d | 2024-04-02 09:00 A | 2024-04-08 18:00 A | 1FS+1d | 100% |  | 2024-04-02 09:00 | 2024-04-08 18:00 | 5d |  |  |  | Аналитик; Ведущий программист | 80h | 80h | 45,500 | 45,500 | 45,500 |
| 4 | 2.2 | Разработка интерфейса |  | 10d | 2024-04-09 09:00 A | 2024-04-22 18:00 A | 3 | 100% |  | 2024-04-09 09:00 | 2024-04-22 18:00 | 10d |  |  |  | Ведущий программист; программист 1; программист 2; программист 3 | 160h | 160h | 68,000 | 63,000 | 68,000 |
| 5 | 2.3 | Разработка модулей обработки данных |  | 16.39d | 2024-04-23 09:00 A | 2024-05-27 17:53 | 4 | 63% | 6.14d | 2024-04-23 09:00 | 2024-05-27 17:53 | 16.39d | 0d |  |  | программист 2; программист 3; программист 1 | 240h | 158.88h | 94,145.31 | 81,000 | 66,761.46 |
| 6 | 2.4 | Разработка базы данных |  | 12.62d | 2024-04-09 09:00 A | 2024-04-30 16:00 A | 3 | 100% |  | 2024-04-09 09:00 | 2024-04-30 16:00 | 12.62d |  |  |  | Аналитик; программист 1; программист 2; программист 3 | 240h | 240h | 96,062.5 | 94,437.5 | 96,062.5 |
| 7 | 2.5 | Заполнение базы данных |  | 12d | 2024-04-30 16:00 A | 2024-05-23 10:00 | 6 | 41% | 7.12d | 2024-04-30 16:00 | 2024-05-23 10:00 | 12d | 2.86d |  |  | Наборщики данных | 96h | 39h | 22,000 | 22,000 | 9,531.25 |
| 8 | 3 | Программирование завершено | milestone | 0d | 2024-05-27 17:53 | 2024-05-27 17:53 | 5, 7 |  |  | 2024-05-27 17:53 | 2024-05-27 17:53 |  | 0d |  |  |  |  |  |  |  |  |
| 9 | 4 | **Тестирование и отладка** |  | 17.21d | 2024-05-20 17:53 | 2024-06-14 10:32 |  |  |  | 2024-05-20 17:53 | 2024-06-10 17:30 | 14.95d | 28.54d |  |  |  | 237.72h |  | 98,762.64 | 123,174.38 |  |
| 10 | 4.1 | Подготовка тестовых наборов данных |  | 6.42d | 2024-05-20 17:53 | 2024-05-29 12:13 | 8FS-5d |  |  | 2024-05-20 17:53 | 2024-05-29 12:13 | 6.42d | 28.54d | 0d |  | программист 1; программист 3; программист 2 | 80h |  | 36,546.97 | 31,000 |  |
| 11 | 4.2 | Тестирование и исправление ошибок |  | 10.42d | 2024-05-29 12:13 | 2024-06-14 10:32 | 10 |  |  | 2024-05-29 12:13 | 2024-06-10 17:30 | 8.54d | 28.54d | 0d |  | программист 2; программист 1; программист 3 | 157.72h |  | 61,215.68 | 91,174.38 |  |
| 12 | 5 | Отладка завершена | milestone | 0d | 2024-06-14 10:32 | 2024-06-14 10:32 | 11 |  |  | 2024-06-10 17:30 | 2024-06-10 17:30 |  | 28.54d |  |  |  |  |  |  |  |  |
| 13 | 6 | **Разработка документации** |  | 30.75d | 2024-06-10 17:53 | 2024-07-24 15:53 |  |  |  | 2024-06-10 17:53 | 2024-07-17 15:53 | 25.75d | 0d |  |  | Бумага [0.01 пач.]; Картриджи для принтера [0.01 шт.] | 200h |  | 60,995 | 59,695 |  |
| 14 | 6.1 | Составление программной документации |  | 10d | 2024-06-10 17:53 | 2024-06-26 11:53 | 8SS+10d |  |  | 2024-06-10 17:53 | 2024-06-26 11:53 | 10d | 0d |  |  | Техн. Писатель | 80h |  | 21,500 | 21,500 |  |
| 15 | 6.2 | Составление пользовательской документации |  | 15d | 2024-06-26 11:53 | 2024-07-24 15:53 | 14 |  |  | 2024-06-26 11:53 | 2024-07-17 15:53 | 15d | 0d |  |  | Техн. Писатель | 120h |  | 31,500 | 31,500 |  |
| 16 | 7 | Конец проекта | milestone | 0d | 2024-07-24 15:53 | 2024-07-24 15:53 | 15 |  |  | 2024-07-17 15:53 | 2024-07-17 15:53 |  | 0d |  |  |  |  |  |  |  |  |
| 17 | 8 | **Прфилактика оборудования** |  | 55.38d | 2024-04-23 09:00 A | 2024-07-16 12:00 |  | 29% | 39.55d | 2024-04-23 09:00 | 2024-07-16 12:00 | 55.38d | 6.36d |  |  |  | 129h | 39h | 44,718.75 | 70,218.75 | 13,312.5 |
| 18 | 8.1 | Прфилактика оборудования 1 |  | 3h | 2024-04-23 09:00 A | 2024-04-23 12:00 |  | 99% | 0h | 2024-04-23 09:00 | 2024-04-23 12:00 | 3h | 61.36d |  | start no earlier than 2024-04-23 09:00 | Договор об обслуживании; Ведущий программист; Наборщики данных; программист 1; программист 2; программист 3; Техн. Писатель | 18h | 18h | 5,906.25 | 10,031.25 | 5,906.25 |
| 19 | 8.2 | Прфилактика оборудования 2 |  | 3h | 2024-05-07 09:00 A | 2024-05-07 12:00 |  | 99% | 0h | 2024-05-07 09:00 | 2024-05-07 12:00 | 3h | 54.36d |  | start no earlier than 2024-05-07 09:00 | Договор об обслуживании; Аналитик; Ведущий программист; Наборщики данных; программист 1; программист 2; программист 3; Техн. Писатель | 21h | 21h | 7,406.25 | 10,031.25 | 7,406.25 |
| 20 | 8.3 | Прфилактика оборудования 3 |  | 3h | 2024-05-21 09:00 | 2024-05-21 12:00 |  |  |  | 2024-05-21 09:00 | 2024-05-21 12:00 | 3h | 45.36d |  | start no earlier than 2024-05-21 09:00 | Договор об обслуживании; Аналитик; Наборщики данных; программист 1; программист 2; программист 3; Техн. Писатель | 18h |  | 6,281.25 | 10,031.25 |  |
| 21 | 8.4 | Прфилактика оборудования 4 |  | 3h | 2024-06-04 09:00 | 2024-06-04 12:00 |  |  |  | 2024-06-04 09:00 | 2024-06-04 12:00 | 3h | 35.36d |  | start no earlier than 2024-06-04 09:00 | Договор об обслуживании; Аналитик; Наборщики данных; программист 1; программист 2; программист 3; Техн. Писатель | 18h |  | 6,281.25 | 10,031.25 |  |
| 22 | 8.5 | Прфилактика оборудования 5 |  | 3h | 2024-06-18 09:00 | 2024-06-18 12:00 |  |  |  | 2024-06-18 09:00 | 2024-06-18 12:00 | 3h | 26.36d |  | start no earlier than 2024-06-18 09:00 | Договор об обслуживании; Аналитик; Наборщики данных; программист 1; программист 2; программист 3; Техн. Писатель | 18h |  | 6,281.25 | 10,031.25 |  |
| 23 | 8.6 | Прфилактика оборудования 6 |  | 3h | 2024-07-02 09:00 | 2024-07-02 12:00 |  |  |  | 2024-07-02 09:00 | 2024-07-02 12:00 | 3h | 16.36d |  | start no earlier than 2024-07-02 09:00 | Договор об обслуживании; Аналитик; Наборщики данных; программист 1; программист 2; программист 3; Техн. Писатель | 18h |  | 6,281.25 | 10,031.25 |  |
| 24 | 8.7 | Прфилактика оборудования 7 |  | 3h | 2024-07-16 09:00 | 2024-07-16 12:00 |  |  |  | 2024-07-16 09:00 | 2024-07-16 12:00 | 3h | 6.36d |  | start no earlier than 2024-07-16 09:00 | Договор об обслуживании; Аналитик; Наборщики данных; программист 1; программист 2; программист 3; Техн. Писатель | 18h |  | 6,281.25 | 10,031.25 |  |
