# Создание карты города

Schedule from MS Project, 2024-03-01 to 2024-08-14, status date 2024-05-17, costs in ₽, A marks actual dates.
Команда разработчиков из 16 человек занимается созданием карты города на основе собственного модуля отображения. Проект должен быть завершен в течение 6 месяцев. Бюджет проекта: 50 000 рублей.

## Calendars

- Стандартный: Mon-Fri 09:00-13:00, 14:00-18:00; Sat-Sun off. Exceptions (off unless hours are given): 2024-03-08 (8 марта), 2024-05-01 to 2024-05-03 (1 мая), 2024-05-09 (9 мая), 2024-06-12 (12 июня).

## Resources

| Resource | Group | Rate | Cost per use |
| --- | --- | --- | --- |
| Ведущий программист | Программирование | 10 | 100 |
| Программист №1 | Программирование | 7 | 50 |
| Программист №2 | Программирование | 7 | 50 |
| Программист №3 | Программирование | 7 | 50 |
| Программист №4 | Программирование | 7 | 50 |
| Системный аналитик | Анализ | 20 | 300 |
| Художник- дизайнер | Дизайн | 8 | 70 |
| Технический писатель | Документация | 5 | 20 |
| Web-дизайнер | Internet | 7 | 50 |
| 3D аниматор | Дизайн | 8 | 70 |
| Мультимедиа- корреспондент | М-медиа | 3 | 20 |
| Наборщик данных №1 | Ввод данных | 2 | 10 |
| Наборщик данных №2 | Ввод данных | 2 | 10 |
| Наборщик данных №3 | Ввод данных | 2 | 10 |
| Наборщик данных №4 | Ввод данных | 2 | 10 |
| Наборщик данных №5 | Ввод данных | 2 | 10 |
| Сервер |  | 2 | 3200 |

## Schedule

| ID | WBS | Task | Type | Duration | Start | Finish | Predecessors | Complete | Remaining | Baseline start | Baseline finish | Baseline duration | Total slack | Free slack | Resources | Work | Actual work | Cost | Baseline cost | Actual cost |
| --- | --- | --- | --- | --- | --- | --- | --- | --- | --- | --- | --- | --- | --- | --- | --- | --- | --- | --- | --- | --- |
| 1 | 1 | Начало проекта | milestone, manual | 0w | 2024-03-01 09:00 A | 2024-03-01 09:00 A |  | 100% |  | 2024-03-01 09:00 | 2024-03-01 09:00 | 0w |  |  |  |  |  |  |  |  |
| 2 | 2 | **Создание интерфейса** |  | 85.23d | 2024-03-01 09:00 A | 2024-07-08 10:52 | 1 | 85% | 12.41d | 2024-03-01 09:00 | 2024-06-20 14:12 | 73.53d | 1.21d | 3.83d |  | 560h | 320h | 6,132 | 5,650 | 3,620 |
| 3 | 2.1 | **Разработка дизайна интерфейса** |  | 30.38d | 2024-03-01 09:00 A | 2024-04-15 12:00 A |  | 100% |  | 2024-03-01 09:00 | 2024-04-08 15:00 | 25.62d |  |  |  | 320h | 320h | 2,770 | 2,770 | 2,770 |
| 4 | 2.1.1 | Разработка 2D графических элементов |  | 3w | 2024-03-01 09:00 A | 2024-03-25 12:00 A |  | 100% |  | 2024-03-01 09:00 | 2024-03-25 12:00 | 3w |  |  | Художник- дизайнер | 120h | 120h | 1,030 | 1,030 | 1,030 |
| 5 | 2.1.2 | Разработка 3D графических элементов |  | 2.95w | 2024-03-01 09:00 A | 2024-03-22 18:00 A | 4SS | 100% |  | 2024-03-01 09:00 | 2024-03-18 11:00 | 2w |  |  | 3D аниматор | 80h | 80h | 710 | 710 | 710 |
| 6 | 2.1.3 | Создание заставки |  | 3w | 2024-03-25 09:00 A | 2024-04-15 12:00 A | 5 | 100% |  | 2024-03-18 11:00 | 2024-04-08 15:00 | 3w |  |  | 3D аниматор | 120h | 120h | 1,030 | 1,030 | 1,030 |
| 7 | 2.2 | Программирование интерфейса |  | 1.52w | 2024-06-26 14:52 | 2024-07-08 10:52 | 3, 12 |  |  | 2024-06-10 09:12 | 2024-06-20 14:12 | 1.5w | 1.21d | 0d | Программист №3; Программист №4; Программист №1; Программист №2 | 240h |  | 2,362 | 1,880 |  |
| 8 | 3 | **Построение базы объектов** |  | 84.4d | 2024-03-25 14:00 A | 2024-07-26 17:12 |  | 39% | 51.59d | 2024-03-25 14:00 | 2024-07-22 15:00 | 80.12d | 12.22d |  | Сервер | 5675.21h | 1912.73h | 13,442 | 15,294 | 8,919.88 |
| 9 | 3.1 | Анализ и построение структуры базы объектов |  | 2w | 2024-03-25 14:00 A | 2024-04-08 15:00 A |  | 100% |  | 2024-03-25 14:00 | 2024-04-08 15:00 | 2w |  |  | Системный аналитик | 80h | 80h | 1,900 | 1,900 | 1,900 |
| 10 | 3.2 | Программирование средств обработки базы объектов |  | 2w | 2024-04-12 17:12 A | 2024-04-26 17:12 A | 9 | 100% |  | 2024-04-08 15:00 | 2024-04-22 15:00 | 2w |  |  | Программист №3; Программист №4; Программист №2 | 240h | 240h | 2,166 | 1,830 | 2,166 |
| 11 | 3.3 | Наполнение базы объектов |  | 12w | 2024-04-26 17:12 A | 2024-07-26 17:12 | 10 | 18% | 9.78w | 2024-04-22 15:00 | 2024-07-22 15:00 | 12w | 12.22d |  | Наборщик данных №1; Наборщик данных №2; Наборщик данных №3; Наборщик данных №4; Наборщик данных №5 | 2400h | 443.94h | 4,850 | 4,850 | 937.88 |
| 12 | 4 | **Создание ядра GIS** |  | 77.61d | 2024-03-01 09:00 A | 2024-06-26 14:52 |  | 66% | 26.44d | 2024-03-01 09:00 | 2024-06-10 09:12 | 66.03d | 1.21d | 0d |  | 1880h | 1068.15h | 19,686.15 | 18,080.04 | 12,238.84 |
| 13 | 4.1 | Анализ и проектирование ядра |  | 3.08w | 2024-03-01 09:00 A | 2024-03-25 12:00 A |  | 100% |  | 2024-03-01 09:00 | 2024-03-25 12:00 | 3.08w |  |  | Ведущий программист; Системный аналитик | 240h | 240h | 4,000 | 4,000 | 4,000 |
| 14 | 4.2 | Создание модели ядра |  | 3.16w | 2024-03-25 12:00 A | 2024-04-15 14:12 A | 13 | 100% |  | 2024-03-25 12:00 | 2024-04-08 12:49 | 2.02w |  |  | Программист №2; Программист №3; Программист №4; Программист №1 [30%] | 400h | 400h | 3,373.49 | 3,336.46 | 3,373.49 |
| 15 | 4.3 | Тестирование модели ядра |  | 1w | 2024-04-15 14:12 A | 2024-04-22 14:12 A | 14 | 100% |  | 2024-04-08 12:49 | 2024-04-15 12:49 | 1w |  |  | Программист №1 | 40h | 40h | 500 | 330 | 500 |
| 16 | 4.4 | Создание рабочей версии ядра |  | 8.39w | 2024-04-22 14:12 A | 2024-06-26 14:52 | 15 | 37% | 5.32w | 2024-04-15 12:49 | 2024-06-10 09:12 | 7.11w | 1.21d | 3.83d | Программист №1; Программист №2; Программист №3; Программист №4 | 1200h | 388.15h | 10,812.66 | 9,413.59 | 3,705.35 |
| 17 | 5 | Создание мультимедиа-наполнения |  | 6w | 2024-04-15 12:00 A | 2024-05-31 16:00 | 3 | 70% | 1.8w | 2024-04-08 15:00 | 2024-05-27 10:00 | 6w | 51.38d | 51.5d | Мультимедиа- корреспондент | 240h | 168h | 812 | 740 | 574.4 |
| 18 | 6 | Создание справочной системы |  | 2w | 2024-07-17 14:52 | 2024-07-31 15:52 | 7 |  |  | 2024-07-11 14:12 | 2024-07-25 15:12 | 2w | 9.39d | 17.02d | Технический писатель | 80h |  | 420 | 420 |  |
| 19 | 7 | **Создание руководства пользователя** |  | 17.25d | 2024-06-24 10:52 | 2024-07-17 12:52 | 7FS-10d |  |  | 2024-06-05 14:12 | 2024-07-23 10:25 | 32.65d | 1.21d | 3.83d |  | 160h |  | 1,010 | 2,820 |  |
| 20 | 7.1 | Разработка дизайна руководства |  | 1w | 2024-06-24 10:52 | 2024-07-01 11:52 |  |  |  | 2024-06-05 14:12 | 2024-06-13 14:12 | 1w | 1.21d | 0d | Художник- дизайнер | 40h |  | 390 | 390 |  |
| 21 | 7.2 | Написание руководства пользователя |  | 3w | 2024-06-26 10:52 | 2024-07-17 12:52 | 20SS+2d |  |  | 2024-06-07 14:12 | 2024-07-23 10:25 | 6.08w | 1.21d | 0d | Технический писатель | 120h |  | 620 | 2,430 |  |
| 22 | 8 | **Создание Web-сайта и поддержка** |  | 23.5d | 2024-06-26 10:52 | 2024-07-29 15:52 |  |  |  | 2024-06-07 14:12 | 2024-07-11 16:12 | 23.25d | 1.21d | 0d |  | 248h |  | 2,106 | 2,106 |  |
| 23 | 8.1 | Разработка структуры сайта |  | 1d | 2024-06-26 10:52 | 2024-06-27 10:52 | 21SS |  |  | 2024-06-07 14:12 | 2024-06-10 14:12 | 1d | 1.21d | 0d | Web-дизайнер | 8h |  | 106 | 106 |  |
| 24 | 8.2 | Разработка дизайна сайта |  | 1.45w | 2024-06-27 10:52 | 2024-07-08 12:52 | 23 |  |  | 2024-06-10 14:12 | 2024-06-20 14:12 | 1.4w | 1.21d | 0d | 3D аниматор; Web-дизайнер; Художник- дизайнер | 120h |  | 1,110 | 1,110 |  |
| 25 | 8.3 | Наполнение сайта |  | 3w | 2024-07-08 12:52 | 2024-07-29 15:52 | 24 |  |  | 2024-06-20 14:12 | 2024-07-11 16:12 | 3w | 1.21d | 3.83d | Web-дизайнер | 120h |  | 890 | 890 |  |
| 26 | 9 | Тестирование сайта |  | 3.04w | 2024-07-22 15:52 | 2024-08-12 17:21 | 22FS-1w |  |  | 2024-07-04 16:12 | 2024-07-22 17:38 | 2.44w | 1.21d | 0d | Программист №1; Программист №2; Программист №3; Программист №4 | 480h |  | 4,471.63 | 3,945.15 |  |
| 27 | 10 | Сдача сайта в эксплуатацию | milestone | 0w | 2024-08-12 17:21 | 2024-08-12 17:21 | 26 |  |  | 2024-07-22 17:38 | 2024-07-22 17:38 | 0w | 1.21d | 3.83d |  |  |  |  |  |  |

| ID | WBS | Task | Type | Duration | Start | Finish | Complete | Remaining | Baseline start | Baseline finish | Baseline duration | Total slack | Constraint | Resources | Work | Actual work | Cost | Baseline cost | Actual cost |
| --- | --- | --- | --- | --- | --- | --- | --- | --- | --- | --- | --- | --- | --- | --- | --- | --- | --- | --- | --- |
| 28 | 11 | **Совещание** |  | 109.12d | 2024-03-06 09:00 A | 2024-08-14 10:00 | 43% | 62.36d | 2024-03-06 09:00 | 2024-09-18 10:00 | 134.12d | 0d |  |  | 147h | 63h | 865.8 | 1,066 | 370.2 |
| 29 | 11.1 | Совещание 1 | manual | 1h | 2024-03-06 09:00 A | 2024-03-06 10:00 A | 100% |  | 2024-03-06 09:00 | 2024-03-06 10:00 | 1h |  | start no earlier than 2024-03-06 09:00 | 3D аниматор; Web-дизайнер; Ведущий программист; Мультимедиа- корреспондент; Системный аналитик; Технический писатель; Художник- дизайнер | 7h | 7h | 41 | 41 | 41 |
| 30 | 11.2 | Совещание 2 | manual | 1h | 2024-03-13 09:00 A | 2024-03-13 10:00 A | 100% |  | 2024-03-13 09:00 | 2024-03-13 10:00 | 1h |  | start no earlier than 2024-03-13 09:00 | 3D аниматор; Web-дизайнер; Ведущий программист; Мультимедиа- корреспондент; Системный аналитик; Технический писатель; Художник- дизайнер | 7h | 7h | 41 | 41 | 41 |
| 31 | 11.3 | Совещание 3 | manual | 1h | 2024-03-20 09:00 A | 2024-03-20 10:00 A | 100% |  | 2024-03-20 09:00 | 2024-03-20 10:00 | 1h |  | start no earlier than 2024-03-20 09:00 | 3D аниматор; Web-дизайнер; Ведущий программист; Мультимедиа- корреспондент; Системный аналитик; Технический писатель; Художник- дизайнер | 7h | 7h | 41 | 41 | 41 |
| 32 | 11.4 | Совещание 4 | manual | 1h | 2024-03-27 09:00 A | 2024-03-27 10:00 A | 100% |  | 2024-03-27 09:00 | 2024-03-27 10:00 | 1h |  | start no earlier than 2024-03-27 09:00 | 3D аниматор; Web-дизайнер; Ведущий программист; Мультимедиа- корреспондент; Системный аналитик; Технический писатель; Художник- дизайнер | 7h | 7h | 41 | 41 | 41 |
| 33 | 11.5 | Совещание 5 | manual | 1h | 2024-04-03 09:00 A | 2024-04-03 10:00 A | 100% |  | 2024-04-03 09:00 | 2024-04-03 10:00 | 1h |  | start no earlier than 2024-04-03 09:00 | 3D аниматор; Web-дизайнер; Мультимедиа- корреспондент; Системный аналитик; Технический писатель; Художник- дизайнер; Программист №1 | 7h | 7h | 41 | 41 | 41 |
| 34 | 11.6 | Совещание 6 | manual | 1h | 2024-04-10 09:00 A | 2024-04-10 10:00 A | 100% |  | 2024-04-10 09:00 | 2024-04-10 10:00 | 1h |  | start no earlier than 2024-04-10 09:00 | 3D аниматор; Web-дизайнер; Мультимедиа- корреспондент; Системный аналитик; Технический писатель; Художник- дизайнер; Программист №1 | 7h | 7h | 41.3 | 41 | 41.3 |
| 35 | 11.7 | Совещание 7 | manual | 1h | 2024-04-17 09:00 A | 2024-04-17 10:00 A | 100% |  | 2024-04-17 09:00 | 2024-04-17 10:00 | 1h |  | start no earlier than 2024-04-17 09:00 | 3D аниматор; Web-дизайнер; Мультимедиа- корреспондент; Системный аналитик; Технический писатель; Художник- дизайнер; Программист №1 | 7h | 7h | 41.3 | 41 | 41.3 |
| 36 | 11.8 | Совещание 8 | manual | 1h | 2024-04-24 09:00 A | 2024-04-24 10:00 A | 100% |  | 2024-04-24 09:00 | 2024-04-24 10:00 | 1h |  | start no earlier than 2024-04-24 09:00 | 3D аниматор; Web-дизайнер; Мультимедиа- корреспондент; Системный аналитик; Технический писатель; Художник- дизайнер; Программист №1 | 7h | 7h | 41.3 | 41 | 41.3 |
| 37 | 11.9 | Совещание 11 | manual | 1h | 2024-05-15 09:00 A | 2024-05-15 10:00 A | 100% |  | 2024-05-15 09:00 | 2024-05-15 10:00 | 1h |  | start no earlier than 2024-05-15 09:00 | 3D аниматор; Web-дизайнер; Мультимедиа- корреспондент; Системный аналитик; Технический писатель; Художник- дизайнер; Программист №1 | 7h | 7h | 41.3 | 41 | 41.3 |
| 38 | 11.10 | Совещание 12 | manual | 1h | 2024-05-22 09:00 | 2024-05-22 10:00 |  |  | 2024-05-22 09:00 | 2024-05-22 10:00 | 1h |  | start no earlier than 2024-05-22 09:00 | 3D аниматор; Web-дизайнер; Мультимедиа- корреспондент; Системный аналитик; Технический писатель; Художник- дизайнер; Программист №1 | 7h |  | 41.3 | 41 |  |
| 39 | 11.11 | Совещание 13 | manual | 1h | 2024-05-29 09:00 | 2024-05-29 10:00 |  |  | 2024-05-29 09:00 | 2024-05-29 10:00 | 1h |  | start no earlier than 2024-05-29 09:00 | 3D аниматор; Web-дизайнер; Мультимедиа- корреспондент; Системный аналитик; Технический писатель; Художник- дизайнер; Программист №1 | 7h |  | 41.3 | 41 |  |
| 40 | 11.12 | Совещание 14 | manual | 1h | 2024-06-05 09:00 | 2024-06-05 10:00 |  |  | 2024-06-05 09:00 | 2024-06-05 10:00 | 1h |  | start no earlier than 2024-06-05 09:00 | 3D аниматор; Web-дизайнер; Мультимедиа- корреспондент; Системный аналитик; Технический писатель; Художник- дизайнер; Программист №1 | 7h |  | 41.3 | 41 |  |
| 41 | 11.13 | Совещание 16 | manual | 1h | 2024-06-19 09:00 | 2024-06-19 10:00 |  |  | 2024-06-19 09:00 | 2024-06-19 10:00 | 1h |  | start no earlier than 2024-06-19 09:00 | 3D аниматор; Web-дизайнер; Мультимедиа- корреспондент; Системный аналитик; Технический писатель; Художник- дизайнер; Программист №1 | 7h |  | 41.3 | 41 |  |
| 42 | 11.14 | Совещание 17 | manual | 1h | 2024-06-26 09:00 | 2024-06-26 10:00 |  |  | 2024-06-26 09:00 | 2024-06-26 10:00 | 1h |  | start no earlier than 2024-06-26 09:00 | 3D аниматор; Web-дизайнер; Мультимедиа- корреспондент; Системный аналитик; Технический писатель; Художник- дизайнер; Программист №1 | 7h |  | 41.3 | 41 |  |
| 43 | 11.15 | Совещание 18 | manual | 1h | 2024-07-03 09:00 | 2024-07-03 10:00 |  |  | 2024-07-03 09:00 | 2024-07-03 10:00 | 1h |  | start no earlier than 2024-07-03 09:00 | 3D аниматор; Web-дизайнер; Мультимедиа- корреспондент; Системный аналитик; Технический писатель; Художник- дизайнер; Программист №1 | 7h |  | 41.3 | 41 |  |
| 44 | 11.16 | Совещание 19 | manual | 1h | 2024-07-10 09:00 | 2024-07-10 10:00 |  |  | 2024-07-10 09:00 | 2024-07-10 10:00 | 1h |  | start no earlier than 2024-07-10 09:00 | 3D аниматор; Web-дизайнер; Мультимедиа- корреспондент; Системный аналитик; Технический писатель; Художник- дизайнер; Программист №1 | 7h |  | 41.3 | 41 |  |
| 45 | 11.17 | Совещание 20 | manual | 1h | 2024-07-17 09:00 | 2024-07-17 10:00 |  |  | 2024-07-17 09:00 | 2024-07-17 10:00 | 1h |  | start no earlier than 2024-07-17 09:00 | 3D аниматор; Web-дизайнер; Мультимедиа- корреспондент; Системный аналитик; Технический писатель; Художник- дизайнер; Программист №1 | 7h |  | 41.3 | 41 |  |
| 46 | 11.18 | Совещание 21 | manual | 1h | 2024-07-24 09:00 | 2024-07-24 10:00 |  |  | 2024-07-24 09:00 | 2024-07-24 10:00 | 1h |  | start no earlier than 2024-07-24 09:00 | 3D аниматор; Web-дизайнер; Мультимедиа- корреспондент; Системный аналитик; Технический писатель; Художник- дизайнер; Программист №1 | 7h |  | 41.3 | 41 |  |
| 47 | 11.19 | Совещание 22 | manual | 1h | 2024-07-31 09:00 | 2024-07-31 10:00 |  |  | 2024-07-31 09:00 | 2024-07-31 10:00 | 1h |  | start no earlier than 2024-07-31 09:00 | 3D аниматор; Web-дизайнер; Мультимедиа- корреспондент; Системный аналитик; Технический писатель; Художник- дизайнер; Программист №1 | 7h |  | 41.3 | 41 |  |
| 48 | 11.20 | Совещание 23 | manual | 1h | 2024-08-07 09:00 | 2024-08-07 10:00 |  |  | 2024-08-07 09:00 | 2024-08-07 10:00 | 1h |  | start no earlier than 2024-08-07 09:00 | 3D аниматор; Web-дизайнер; Мультимедиа- корреспондент; Системный аналитик; Технический писатель; Художник- дизайнер; Программист №1 | 7h |  | 41.3 | 41 |  |
| 49 | 11.21 | Совещание 24 | manual | 1h | 2024-08-14 09:00 | 2024-08-14 10:00 |  |  | 2024-08-14 09:00 | 2024-08-14 10:00 | 1h |  | start no earlier than 2024-08-14 09:00 | 3D аниматор; Web-дизайнер; Мультимедиа- корреспондент; Системный аналитик; Технический писатель; Художник- дизайнер; Программист №1 | 7h |  | 41.3 | 41 |  |
