# Создание карты города

Schedule from MS Project, 2024-04-01 to 2024-07-26, status date 2024-05-13, costs in ₽, A marks actual dates.
Команда разработчиков из 16 человек занимается созданием карты города на основе собственного модуля отображения. Проект должен быть завершен в течение 6 месяцев. Бюджет проекта: 50 000 рублей.

## Calendars

- Стандартный: Mon-Fri 09:00-13:00, 14:00-18:00; Sat-Sun off. Exceptions (off unless hours are given): 2024-05-01 to 2024-05-03 (1 мая), 2024-05-09 (9 мая), 2024-06-12 (12 июня).

## Resources

| Resource | Group | Unit | Rate | Cost per use |
| --- | --- | --- | --- | --- |
| Аналитик |  |  | 500 | 5000 |
| Ведущий программист | Програмисты |  | 437.5 | 3000 |
| программист 1 | Програмисты |  | 312.5 | 2000 |
| программист 2 | Програмисты |  | 312.5 | 2000 |
| программист 3 | Програмисты |  | 312.5 | 2000 |
| Техн. Писатель |  |  | 250 | 1500 |
| Наборщики данных | Техн. Персонал |  | 218.75 | 1000 |
| Сервер БД | Оборудование |  | 25000 | 10000 |
| Картриджи для принтера | Расходные материалы | шт. | 2500 |  |
| Бумага | Расходные материалы | пач. | 200 |  |
| Договор об обслуживании |  |  | 3000 |  |

## Schedule

| ID | WBS | Task | Type | Duration | Start | Finish | Predecessors | Complete | Remaining | Baseline start | Baseline finish | Baseline duration | Total slack | Free slack | Constraint | Resources | Work | Actual work | Cost | Baseline cost | Actual cost |
| --- | --- | --- | --- | --- | --- | --- | --- | --- | --- | --- | --- | --- | --- | --- | --- | --- | --- | --- | --- | --- | --- |
| 1 | 1 | Начало реализации проекта | milestone | 0d | 2024-04-01 09:00 A | 2024-04-01 09:00 A |  | 100% |  | 2024-04-01 09:00 | 2024-04-01 09:00 | 0d |  |  |  |  |  |  |  |  |  |
| 2 | 2 | **Программирование** |  | 42.61d | 2024-04-02 09:00 A | 2024-06-05 14:53 |  | 54% | 19.41d | 2024-04-02 09:00 | 2024-05-30 10:50 | 38.23d | 0d |  |  | Сервер БД | 816h | 528.09h | 372,702.93 | 340,676.08 | 271,865.19 |
| 3 | 2.1 | Постановка задачи |  | 5d | 2024-04-02 09:00 A | 2024-04-08 18:00 A | 1FS+1d | 100% |  | 2024-04-02 09:00 | 2024-04-08 18:00 | 5d |  |  |  | Аналитик; Ведущий программист | 80h | 80h | 45,500 | 45,500 | 45,500 |
| 4 | 2.2 | Разработка интерфейса |  | 6d | 2024-04-09 09:00 A | 2024-04-16 18:00 A | 3 | 100% |  | 2024-04-09 09:00 | 2024-04-16 18:00 | 6d |  |  |  | Ведущий программист; программист 1; программист 2; программист 3 | 160h | 160h | 64,000 | 63,000 | 64,000 |
| 5 | 2.3 | Разработка модулей обработки данных |  | 22.67d | 2024-04-22 14:28 A | 2024-06-05 14:53 | 4 | 10% | 20.4d | 2024-04-26 15:36 | 2024-05-30 10:50 | 19.15d | 0d |  |  | программист 2; программист 1 | 240h | 18.14h | 98,634.82 | 79,000 | 12,934.06 |
| 6 | 2.4 | Разработка базы данных |  | 17.26d | 2024-04-09 09:00 A | 2024-05-07 11:02 A | 3 | 100% |  | 2024-04-09 09:00 | 2024-05-07 12:50 | 17.48d |  |  |  | Аналитик; программист 1; программист 2; программист 3 | 240h | 240h | 106,068.11 | 94,676.08 | 106,068.11 |
| 7 | 2.5 | Заполнение базы данных |  | 12d | 2024-05-07 11:02 A | 2024-05-24 11:02 | 6 | 31% | 8.26d | 2024-05-07 12:50 | 2024-05-24 12:50 | 12d | 8.36d |  |  | Наборщики данных | 96h | 29.96h | 22,000 | 22,000 | 7,553.02 |
| 8 | 3 | Программирование завершено | milestone | 0d | 2024-06-05 14:53 | 2024-06-05 14:53 | 5, 7 |  |  | 2024-05-30 10:50 | 2024-05-30 10:50 | 0d | 0d |  |  |  |  |  |  |  |  |
| 9 | 4 | **Тестирование и отладка** |  | 21.7d | 2024-05-29 14:53 | 2024-07-01 11:27 |  |  |  | 2024-05-23 10:50 | 2024-06-13 11:36 | 14.1d | 19.05d |  |  |  | 320h |  | 124,500 | 121,500 |  |
| 10 | 4.1 | Подготовка тестовых наборов данных |  | 3.33d | 2024-05-29 14:53 | 2024-06-03 17:33 | 8FS-5d |  |  | 2024-05-23 10:50 | 2024-05-31 12:36 | 6.22d | 19.05d | 0d |  | программист 1; программист 3; программист 2 | 80h |  | 37,000 | 29,000 |  |
| 11 | 4.2 | Тестирование и исправление ошибок |  | 17.99d | 2024-06-03 17:33 | 2024-07-01 11:27 | 10 |  |  | 2024-05-31 12:36 | 2024-06-13 11:36 | 7.88d | 19.05d | 0d |  | программист 2; программист 3 | 240h |  | 86,500 | 91,500 |  |
| 12 | 5 | Отладка завершена | milestone | 0d | 2024-07-01 11:27 | 2024-07-01 11:27 | 11 |  |  | 2024-06-13 11:36 | 2024-06-13 11:36 | 0d | 19.05d | 21.29d |  |  |  |  |  |  |  |
| 13 | 6 | **Разработка документации** |  | 25.75d | 2024-06-20 14:53 | 2024-07-26 11:53 |  |  |  | 2024-06-14 10:50 | 2024-07-22 11:50 | 26.12d | 0d |  |  | Бумага [0.01 пач.]; Картриджи для принтера [0.01 шт.] | 200h |  | 59,695 | 59,792.5 |  |
| 14 | 6.1 | Составление программной документации |  | 10d | 2024-06-20 14:53 | 2024-07-04 14:53 | 8SS+10d |  |  | 2024-06-14 10:50 | 2024-06-28 14:50 | 10d | 0d |  |  | Техн. Писатель | 80h |  | 21,500 | 21,500 |  |
| 15 | 6.2 | Составление пользовательской документации |  | 15d | 2024-07-04 17:53 | 2024-07-26 11:53 | 14 |  |  | 2024-06-28 14:50 | 2024-07-22 11:50 | 15d | 0d |  |  | Техн. Писатель | 120h |  | 31,500 | 31,500 |  |
| 16 | 7 | Конец проекта | milestone | 0d | 2024-07-26 11:53 | 2024-07-26 11:53 | 15 |  |  | 2024-07-22 11:50 | 2024-07-22 11:50 | 0d | 0d |  |  |  |  |  |  |  |  |
| 17 | 8 | **Прфилактика оборудования** |  | 55.38d | 2024-04-23 09:00 A | 2024-07-16 12:00 |  | 29% | 39.55d | 2024-04-23 09:00 | 2024-07-16 12:00 | 55.38d | 0d |  |  |  | 111h | 21h | 54,806.25 | 77,843.75 | 7,462.5 |
| 18 | 8.1 | Прфилактика оборудования 1 | manual | 3h | 2024-04-23 09:00 A | 2024-04-23 12:00 |  | 99% | 0h | 2024-04-23 09:00 | 2024-04-23 12:00 | 3h |  |  | start no earlier than 2024-04-23 09:00 | Наборщики данных; программист 1; программист 2; программист 3; Техн. Писатель; Договор об обслуживании | 3h | 3h | 993.75 | 15,406.25 | 993.75 |
| 19 | 8.2 | Прфилактика оборудования 2 | manual | 3h | 2024-05-07 09:00 A | 2024-05-07 12:00 |  | 99% | 0h | 2024-05-07 09:00 | 2024-05-07 12:00 | 3h |  |  | start no earlier than 2024-05-07 09:00 | Договор об обслуживании; Аналитик; Наборщики данных; программист 1; программист 2; программист 3; Техн. Писатель | 18h | 18h | 6,468.75 | 10,406.25 | 6,468.75 |
| 20 | 8.3 | Прфилактика оборудования 3 | manual | 3h | 2024-05-21 09:00 | 2024-05-21 12:00 |  |  |  | 2024-05-21 09:00 | 2024-05-21 12:00 | 3h |  |  | start no earlier than 2024-05-21 09:00 | Договор об обслуживании; Аналитик; Наборщики данных; программист 1; программист 2; программист 3; Техн. Писатель | 18h |  | 9,468.75 | 10,406.25 |  |
| 21 | 8.4 | Прфилактика оборудования 4 | manual | 3h | 2024-06-04 09:00 | 2024-06-04 12:00 |  |  |  | 2024-06-04 09:00 | 2024-06-04 12:00 | 3h |  |  | start no earlier than 2024-06-04 09:00 | Договор об обслуживании; Аналитик; Наборщики данных; программист 1; программист 2; программист 3; Техн. Писатель | 18h |  | 9,468.75 | 10,406.25 |  |
| 22 | 8.5 | Прфилактика оборудования 5 | manual | 3h | 2024-06-18 09:00 | 2024-06-18 12:00 |  |  |  | 2024-06-18 09:00 | 2024-06-18 12:00 | 3h |  |  | start no earlier than 2024-06-18 09:00 | Договор об обслуживании; Аналитик; Наборщики данных; программист 1; программист 2; программист 3; Техн. Писатель | 18h |  | 9,468.75 | 10,406.25 |  |
| 23 | 8.6 | Прфилактика оборудования 6 | manual | 3h | 2024-07-02 09:00 | 2024-07-02 12:00 |  |  |  | 2024-07-02 09:00 | 2024-07-02 12:00 | 3h |  |  | start no earlier than 2024-07-02 09:00 | Договор об обслуживании; Аналитик; Наборщики данных; программист 1; программист 2; программист 3; Техн. Писатель | 18h |  | 9,468.75 | 10,406.25 |  |
| 24 | 8.7 | Прфилактика оборудования 7 | manual | 3h | 2024-07-16 09:00 | 2024-07-16 12:00 |  |  |  | 2024-07-16 09:00 | 2024-07-16 12:00 | 3h |  |  | start no earlier than 2024-07-16 09:00 | Договор об обслуживании; Аналитик; Наборщики данных; программист 1; программист 2; программист 3; Техн. Писатель | 18h |  | 9,468.75 | 10,406.25 |  |
